# Proyecto capstone

Schedule from MS Project, 2025-08-11 to 2025-11-06, A marks actual dates.

## Calendars

- feriados 2025: Mon-Fri 09:00-13:00, 15:00-19:00; Sat-Sun off. Exceptions (off unless hours are given): 2025-08-15 (Asunción de la virgen), 2025-09-18 to 2025-09-19 (Fiestas Patrias), 2025-10-12 (Encuentro de dos mundos), 2025-10-31 to 2025-11-01 (Todos los santos).

## Schedule

| ID | WBS | Task | Duration | Start | Finish | Predecessors | Complete | Remaining | Total slack | Constraint |
| --- | --- | --- | --- | --- | --- | --- | --- | --- | --- | --- |
| 1 | 0 | **Proyecto de Traducción a LSCh CATCH AI** | 60d | 2025-08-11 A | 2025-11-06 |  | 82% | 10.61d | 0d |  |
| 2 | 0 | **Sprint 0** | 6d | 2025-08-11 A | 2025-08-19 A |  | 100% |  |  |  |
| 3 | 0.1 | **Elaboración de Documentación inicial del Proyecto** | 4d | 2025-08-11 A | 2025-08-14 A |  | 100% |  |  |  |
| 4 | 0.1.1 | Kick-off meeting del proyecto | 1d | 2025-08-11 A | 2025-08-11 A |  | 100% |  |  | start no earlier than 2025-08-11 |
| 5 | 0.1.2 | Elaboración del ERS (Especificación de Requerimientos de Software) | 2d | 2025-08-12 A | 2025-08-13 A | 4 | 100% |  |  |  |
| 6 | 0.1.3 | Definición de roles y responsabilidades (Matriz RACI) | 1d | 2025-08-14 A | 2025-08-14 A | 5 | 100% |  |  |  |
| 7 | 0.4 | Planificación general y creación backlog inicial | 1d | 2025-08-15 A | 2025-08-18 A | 6 | 100% |  |  | start no earlier than 2025-08-17 |
| 8 | 0.5 | Configuración entorno de desarrollo (repositorios, Trello, Project) | 3d | 2025-08-14 A | 2025-08-18 A | 5 | 100% |  |  | start no earlier than 2025-08-10 |
| 9 | 0.6 | Pruebas iniciales de cámaras y laboratorio FreeMoCap | 4d | 2025-08-14 A | 2025-08-19 A | 5 | 100% |  |  | start no earlier than 2025-08-10 |
| 10 | 0.7 | Pruebas de micrófonos y setup voz a texto | 1d | 2025-08-14 A | 2025-08-14 A | 5 | 100% |  |  | start no earlier than 2025-08-10 |
| 11 | 0.8 | Gestión de riesgos y mitigaciones | 1d | 2025-08-18 A | 2025-08-18 A | 7 | 100% |  |  | start no earlier than 2025-09-01 |
| 12 | 0.9 | Selección y priorización de historias de usuario | 1d | 2025-08-19 A | 2025-08-19 A | 11 | 100% |  |  |  |
| 13 | 1 | **Sprint 1** | 15d | 2025-08-20 A | 2025-09-09 A | 12 | 100% |  |  |  |
| 14 | 1.1 | Planificación Sprint 1 | 1d | 2025-08-20 A | 2025-08-20 A |  | 100% |  |  | start no earlier than 2025-08-20 |
| 15 | 1.2 | Reuniones de seguimiento semanales | 3d | 2025-08-20 A | 2025-08-22 A |  | 100% |  |  | start no earlier than 2025-08-20 |
| 16 | 1.3 | **Implementación módulo voz a texto (Whisper/AWS)** | 10d | 2025-08-21 A | 2025-09-03 A | 14 | 100% |  |  |  |
| 17 | 1.3.1 | Instalación y configuración de entorno de desarrollo (Python, librerías, Whisper/AWS Transcribe) | 1d | 2025-08-21 A | 2025-08-21 A |  | 100% |  |  |  |
| 18 | 1.3.2 | Pruebas iniciales de transcripción con audios de prueba | 2d | 2025-08-22 A | 2025-08-25 A | 17 | 100% |  |  |  |
| 19 | 1.3.3 | Optimización de parámetros de reconocimiento de voz (latencia, precisión) | 4d | 2025-08-26 A | 2025-08-29 A | 18 | 100% |  |  |  |
| 20 | 1.3.4 | Documentación del módulo de transcripción | 3d | 2025-09-01 A | 2025-09-03 A | 19 | 100% |  |  |  |
| 21 | 1.4 | **Creación avatar 3D (básico)** | 11d | 2025-08-21 A | 2025-09-04 A | 14 | 100% |  |  |  |
| 22 | 1.4.1 | Investigación y análisis de requisitos | 1d | 2025-08-21 A | 2025-08-21 A |  | 100% |  |  |  |
| 23 | 1.4.2 | Diseño conceptual del avatar | 2d | 2025-08-21 A | 2025-08-22 A |  | 100% |  |  |  |
| 24 | 1.4.3 | Modelado 3D | 3d | 2025-08-25 A | 2025-08-27 A | 23 | 100% |  |  |  |
| 25 | 1.4.4 | Texturizado y materiales | 2d | 2025-08-28 A | 2025-08-29 A | 24 | 100% |  |  |  |
| 26 | 1.4.5 | Rigging (esqueleto y controladores) | 1d | 2025-09-01 A | 2025-09-01 A | 25 | 100% |  |  |  |
| 27 | 1.4.6 | Animación básica | 2d | 2025-09-02 A | 2025-09-03 A | 26 | 100% |  |  |  |
| 28 | 1.4.7 | Pruebas de exportación | 1d | 2025-09-04 A | 2025-09-04 A | 27 | 100% |  |  |  |
| 29 | 1.4.8 | Integración en entorno de aplicación | 1d | 2025-09-04 A | 2025-09-04 A | 27 | 100% |  |  |  |

| ID | WBS | Task | Duration | Start | Finish | Predecessors | Complete |
| --- | --- | --- | --- | --- | --- | --- | --- |
| 30 | 1.5 | **Captura de movimientos con FreeMoCap** | 10d | 2025-08-21 A | 2025-09-03 A | 14 | 100% |
| 31 | 1.5.1 | Seleccionar las señas a grabar | 2d | 2025-08-21 A | 2025-08-22 A |  | 100% |
| 32 | 1.5.2 | Grabación de señas individuales | 2d | 2025-08-25 A | 2025-08-26 A | 31 | 100% |
| 33 | 1.5.3 | Configuración y calibración de cámaras | 2d | 2025-08-27 A | 2025-08-28 A | 32 | 100% |
| 34 | 1.5.4 | Revisión y almacenamiento de archivos capturados | 2d | 2025-08-29 A | 2025-09-01 A | 33 | 100% |
| 35 | 1.5.5 | Organización de los datos en carpetas estructuradas | 2d | 2025-09-02 A | 2025-09-03 A | 34 | 100% |
| 36 | 1.6 | Informe de avance técnico Sprint 1 | 2d | 2025-09-05 A | 2025-09-08 A | 16, 21, 30 | 100% |
| 37 | 1.7 | Refinamiento y actualización de backlog | 1d | 2025-09-09 A | 2025-09-09 A | 36 | 100% |
| 38 | 2 | **Sprint 2** | 12d | 2025-09-10 A | 2025-09-29 A | 37 | 100% |
| 39 | 2.1 | Planificación Sprint 2 | 1d | 2025-09-10 A | 2025-09-10 A |  | 100% |
| 40 | 2.2 | Revisión y actualización del ERS | 1d | 2025-09-10 A | 2025-09-10 A | 37 | 100% |
| 41 | 2.3 | **Normalización de texto + pipeline NLP** | 10d | 2025-09-11 A | 2025-09-26 A | 40 | 100% |
| 42 | 2.3.1 | Diseñar pipeline de preprocesamiento de texto | 2d | 2025-09-11 A | 2025-09-12 A |  | 100% |
| 43 | 2.3.2 | Implementar limpieza y normalización (regex, stopwords, lowercase, etc.) | 4d | 2025-09-15 A | 2025-09-22 A | 42 | 100% |
| 44 | 2.3.3 | Pruebas con diferentes corpus y ajustes de reglas de normalización | 3d | 2025-09-23 A | 2025-09-25 A | 43 | 100% |
| 45 | 2.3.4 | Documentación y validación interna del pipeline | 1d | 2025-09-26 A | 2025-09-26 A | 44 | 100% |
| 46 | 2.4 | **Creación de estructura de esqueleto para el avatar** | 9d | 2025-09-11 A | 2025-09-25 A | 40 | 100% |
| 47 | 2.4.1 | Definición de la estructura ósea | 1d | 2025-09-11 A | 2025-09-11 A |  | 100% |
| 48 | 2.4.2 | Configuración de controladores | 2d | 2025-09-12 A | 2025-09-15 A | 47 | 100% |
| 49 | 2.4.3 | Creación de “weight painting” | 2d | 2025-09-16 A | 2025-09-17 A | 48 | 100% |
| 50 | 2.4.4 | Validación de movimientos críticos | 1d | 2025-09-22 A | 2025-09-22 A | 49 | 100% |
| 51 | 2.4.5 | Optimización del sistema interno | 2d | 2025-09-23 A | 2025-09-24 A | 50 | 100% |
| 52 | 2.4.6 | Documentación técnica | 1d | 2025-09-25 A | 2025-09-25 A | 51 | 100% |
| 53 | 2.5 | **Depuración y ajuste de animaciones en Blender** | 8d | 2025-09-11 A | 2025-09-24 A | 40 | 100% |
| 54 | 2.5.1 | Importar datos de FreeMoCap en Blender | 3d | 2025-09-11 A | 2025-09-15 A |  | 100% |
| 55 | 2.5.2 | Eliminar frames con ruido o movimientos erróneos | 3d | 2025-09-16 A | 2025-09-22 A | 54 | 100% |
| 56 | 2.5.3 | Normalizar la escala y orientación del avatar | 1d | 2025-09-23 A | 2025-09-23 A | 55 | 100% |
| 57 | 2.5.4 | Exportar animaciones en formato GLB/FBX | 1d | 2025-09-24 A | 2025-09-24 A | 56 | 100% |
| 58 | 2.6 | Informe de avance técnico Sprint 2 | 1d | 2025-09-29 A | 2025-09-29 A | 40, 41, 46, 53 | 100% |

| ID | WBS | Task | Duration | Start | Finish | Predecessors | Complete | Remaining | Total slack | Free slack |
| --- | --- | --- | --- | --- | --- | --- | --- | --- | --- | --- |
| 59 | 3 | **Sprint 3** | 24d | 2025-09-30 A | 2025-11-03 | 58 | 61% | 9.36d | 0d |  |
| 60 | 3.1 | Planificación Sprint 3 | 1d | 2025-09-30 A | 2025-09-30 A |  | 100% |  |  |  |
| 61 | 3.2 | **Entrenamiento modelo Transformer (señas)** | 10d | 2025-10-01 A | 2025-10-14 | 60 | 70% | 3d | 13d |  |
| 62 | 3.2.1 | Definir arquitectura del modelo Transformer y dataset base | 2d | 2025-10-01 A | 2025-10-02 A |  | 100% |  |  |  |
| 63 | 3.2.2 | Preparar dataset de entrenamiento y validación | 2d | 2025-10-03 A | 2025-10-06 A | 62 | 100% |  |  |  |
| 64 | 3.2.3 | Entrenamiento inicial del modelo y ajuste de hiperparámetros | 3d | 2025-10-07 A | 2025-10-09 A | 63 | 100% |  |  |  |
| 65 | 3.2.4 | Evaluación con métricas (accuracy, recall, F1-score) | 1d | 2025-10-10 | 2025-10-10 | 64 |  |  | 13d | 0d |
| 66 | 3.2.5 | Optimización y regularización (dropout, augmentation, early stopping) | 2d | 2025-10-13 | 2025-10-14 | 65 |  |  | 13d |  |
| 67 | 3.3 | **Implementación de texturas realistas** | 5d | 2025-09-30 A | 2025-10-06 |  | 30% | 3.5d | 19d |  |
| 68 | 3.3.1 | Selección de librerías de texturas | 0.5d | 2025-09-30 A | 2025-09-30 A |  | 100% |  |  |  |
| 69 | 3.3.2 | Creación de mapas UV | 1d | 2025-09-30 A | 2025-10-01 A | 68 | 100% |  |  |  |
| 70 | 3.3.3 | Implementación de materiales PBR | 1d | 2025-10-01 | 2025-10-02 | 69 |  |  | 19d | 0d |
| 71 | 3.3.4 | Creación de mapas secundarios | 1d | 2025-10-02 | 2025-10-03 | 70 |  |  | 19d | 0d |
| 72 | 3.3.5 | Pruebas de iluminación sobre texturas | 1d | 2025-10-03 | 2025-10-06 | 71 |  |  | 19d | 0d |
| 73 | 3.3.6 | Ajuste y optimización de rendimiento | 0.5d | 2025-10-06 | 2025-10-06 | 72 |  |  | 19d |  |
| 74 | 3.4 | **Implementación e integración del avatar en Godot** | 10d | 2025-10-01 A | 2025-10-14 | 60 | 40% | 6d | 0d |  |
| 75 | 3.4.1 | Crear un proyecto base en Godot | 2d | 2025-10-01 A | 2025-10-02 A |  | 100% |  |  |  |
| 76 | 3.4.2 | Importar el avatar 3D y las animaciones | 2d | 2025-10-03 A | 2025-10-06 A | 75 | 100% |  |  |  |
| 77 | 3.4.3 | Configurar Skeleton3D y AnimationPlayer | 2d | 2025-10-07 | 2025-10-08 | 76 |  |  | 0d |  |
| 78 | 3.4.4 | Probar reproducción de animaciones manualmente | 2d | 2025-10-09 | 2025-10-10 | 77 |  |  | 0d |  |
| 79 | 3.4.5 | Ajustar compatibilidad de materiales y texturas | 2d | 2025-10-13 | 2025-10-14 | 78 |  |  | 0d |  |
| 80 | 3.5 | **Integración de modelo con biblioteca de señas** | 6d | 2025-10-01 A | 2025-10-08 | 60 | 83% | 1d | 4d |  |
| 81 | 3.5.1 | Diseñar API de conexión entre modelo y motor gráfico (Godot/Unity) | 1d | 2025-10-01 A | 2025-10-01 A |  | 100% |  |  |  |
| 82 | 3.5.2 | Programar la vinculación texto → seña → animación | 2d | 2025-10-02 A | 2025-10-03 A | 81 | 100% |  |  |  |
| 83 | 3.5.3 | Pruebas de compatibilidad de formatos (GLB/FBX, Unity/Godot) | 2d | 2025-10-06 A | 2025-10-07 A | 82 | 100% |  |  |  |
| 84 | 3.5.4 | Ajustes de rendimiento y documentación técnica | 1d | 2025-10-08 | 2025-10-08 | 83 |  |  | 4d |  |

| ID | WBS | Task | Duration | Start | Finish | Predecessors | Complete | Remaining | Total slack | Free slack |
| --- | --- | --- | --- | --- | --- | --- | --- | --- | --- | --- |
| 85 | 3.6 | **Fusión avatar y animaciones** | 13d | 2025-10-15 A | 2025-11-03 | 74 | 46% | 7d | 0d |  |
| 86 | 1.4.6.1 | Preparación de archivos de captura de movimiento | 1d | 2025-10-15 A | 2025-10-15 A |  | 100% |  |  |  |
| 87 | 1.4.6.2 | Retargeting de animaciones | 3d | 2025-10-16 A | 2025-10-20 A | 86 | 100% |  |  |  |
| 88 | 1.4.6.3 | Ajuste de sincronización | 2d | 2025-10-21 A | 2025-10-22 A | 87 | 100% |  |  |  |
| 89 | 1.4.6.4 | Corrección de deformaciones | 2d | 2025-10-23 | 2025-10-24 | 88 |  |  | 0d |  |
| 90 | 1.4.6.5 | Integración en motor Godot | 3d | 2025-10-27 | 2025-10-29 | 89 |  |  | 0d |  |
| 91 | 1.4.6.6 | Pruebas de rendimiento en tiempo real | 1d | 2025-10-30 | 2025-10-30 | 90 |  |  | 0d |  |
| 92 | 1.4.6.7 | Generación de alternativas de integración | 1d | 2025-11-03 | 2025-11-03 | 91 |  |  | 0d |  |
| 93 | 3.7 | **Desarrollo de menús y lógica en Godot** | 10d | 2025-10-01 A | 2025-10-14 A | 60 | 100% |  |  |  |
| 94 | 3.7.1 | Diseñar interfaz inicial (UI) | 2d | 2025-10-01 A | 2025-10-02 A |  | 100% |  |  |  |
| 95 | 3.7.2 | Implementar botones para seleccionar animaciones | 2d | 2025-10-03 A | 2025-10-06 A | 94 | 100% |  |  |  |
| 96 | 3.7.3 | Programar lógica de reproducción desde UI | 2d | 2025-10-07 A | 2025-10-08 A | 95 | 100% |  |  |  |
| 97 | 3.7.4 | Validar que las animaciones se ejecuten sin errores | 2d | 2025-10-09 A | 2025-10-10 A | 96 | 100% |  |  |  |
| 98 | 3.7.5 | Realizar pruebas de usabilidad interna con el equipo | 2d | 2025-10-13 A | 2025-10-14 A | 97 | 100% |  |  |  |
| 99 | 3.8 | **Pruebas funcionales y conexión speech-to-text con Godot** | 3d | 2025-10-15 A | 2025-10-17 | 80, 93, 74 | 50% | 1.5d | 9d | 0d |
| 100 | 3.8.1 | Programar comunicación HTTP request entre Godot y el modelo | 0.5d | 2025-10-15 A | 2025-10-15 A |  | 100% |  |  |  |
| 101 | 3.8.2 | Asociar palabras reconocidas a animaciones específicas | 0.5d | 2025-10-15 A | 2025-10-15 A | 100 | 100% |  |  |  |
| 102 | 3.8.3 | Prueba del flujo completo (voz → texto → normalización → modelo → seña) | 0.5d | 2025-10-16 A | 2025-10-16 A | 101 | 100% |  |  |  |
| 103 | 3.8.4 | Corrección de errores y mejoras en sincronización | 0.5d | 2025-10-16 | 2025-10-16 | 102 |  |  | 9d | 0d |
| 104 | 3.8.5 | Elaboración de informe de validación y resultados | 1d | 2025-10-17 | 2025-10-17 | 103 |  |  | 9d |  |
| 105 | 3.9 | Informe de avance técnico Sprint 3 | 1d | 2025-10-20 | 2025-10-20 | 99 |  |  | 9d |  |
| 106 | 4 | **Pruebas y Entrega** | 3d | 2025-11-04 | 2025-11-06 | 59 |  |  | 0d |  |
| 107 | 4.1 | Validación final del MVP con stakeholders | 1d | 2025-11-04 | 2025-11-04 |  |  |  | 0d |  |
| 108 | 4.2 | Revisión final de entregables | 1d | 2025-11-05 | 2025-11-05 | 107 |  |  | 0d |  |
| 109 | 4.3 | Presentación final del MVP | 1d | 2025-11-06 | 2025-11-06 | 108 |  |  | 0d |  |
